Schedule from MS Project, 2017-09-27 to 2018-01-05, A marks actual dates.

## Calendars

- 标准: Mon-Fri 08:00-12:00, 13:00-17:00; Sat-Sun off.

## Resources

| Resource |
| --- |
| 吴安之 |
| 吕莉 |
| 陈董锴 |

## Schedule

| ID | WBS | Task | Type | Duration | Start | Finish | Predecessors | Complete | Remaining | Actual start | Actual finish | Resources | Work | Actual work | 项目调整备注 | 负责人 |
| --- | --- | --- | --- | --- | --- | --- | --- | --- | --- | --- | --- | --- | --- | --- | --- | --- |
| 1 | 1 | **启动** |  | 11d | 2017-09-27 A | 2017-10-11 |  | 100% |  |  | 2017-10-03 |  | 72h | 72h |  |  |
| 2 | 1.1 | 讨论项目内容与简介 | manual | 1d | 2017-09-28 A | 2017-09-28 A |  | 100% |  |  |  | 吕莉; 吴安之; 陈董锴 | 24h | 24h | 课时冲突项目开始时间延迟一天 |  |
| 3 | 1.2 | 软件安装 | manual | 2d | 2017-09-29 A | 2017-10-02 A |  | 100% |  |  |  | 吴安之 | 16h | 16h |  |  |
| 4 | 1.3 | 完成项目计划简介 | manual | 1d | 2017-09-29 A | 2017-09-29 A | 2 | 100% |  |  |  | 陈董锴 | 8h | 8h |  |  |
| 5 | 1.4 | 预先学习 | manual | 3d | 2017-09-29 A | 2017-10-03 A |  | 100% |  |  |  | 吕莉 | 24h | 24h |  |  |
| 6 | 1.5 | 项目介绍以及PPT | milestone, manual | 0d | 2017-09-27 A | 2017-09-27 A |  | 100% |  |  |  |  |  |  |  |  |
| 7 | 2 | **问题定义** |  | 11d | 2017-10-11 A | 2017-10-25 | 1 | 100% |  |  | 2017-10-23 |  | 200h | 200h |  | 陈董锴 |
| 8 | 2.1 | **项目计划拟定** |  | 6d | 2017-10-11 A | 2017-10-18 | 1 | 100% |  |  | 2017-10-16 |  | 40h | 40h |  |  |
| 9 | 2.1.1 | 寻找项目计划模版与后续模版 | manual | 1d | 2017-10-12 A | 2017-10-12 A |  | 100% |  |  |  | 陈董锴 | 8h | 8h |  |  |
| 10 | 2.1.2 | 预先绘制甘特图 | manual | 1d | 2017-10-11 A | 2017-10-11 A |  | 100% |  |  |  | 吴安之 | 8h | 8h |  |  |
| 11 | 2.1.3 | 完成项目计划引言和概述 | manual | 1d | 2017-10-13 A | 2017-10-13 A | 9 | 100% |  |  |  | 吕莉 | 8h | 8h |  |  |
| 12 | 2.1.4 | 完成项目计划实施与支持条件 | manual | 1d | 2017-10-13 A | 2017-10-13 A | 9 | 100% |  |  |  | 吴安之 | 8h | 8h |  |  |
| 13 | 2.1.5 | 项目计划初稿整体修订 | manual | 1d | 2017-10-16 A | 2017-10-16 A | 11, 12 | 100% |  |  |  | 陈董锴 | 8h | 8h |  |  |
| 14 | 2.1.6 | 项目计划初稿以及PPT | milestone, manual | 0d | 2017-10-11 A | 2017-10-11 A |  | 100% |  |  |  |  |  |  |  |  |
| 15 | 2.2 | **项目计划修订** |  | 6d | 2017-10-18 | 2017-10-25 | 8 | 100% |  | 2017-10-12 | 2017-10-23 |  | 160h | 160h |  |  |
| 16 | 2.2.1 | 甘特图修订 | manual | 4d | 2017-10-12 A | 2017-10-17 A | 10 | 100% |  |  |  | 吴安之 | 32h | 32h |  |  |
| 17 | 2.2.2 | 组织分解结构与工作分解结构拟定（OBS,WBS） | manual | 4d | 2017-10-18 A | 2017-10-22 A |  | 100% |  |  |  | 吴安之 | 32h | 32h |  |  |
| 18 | 2.2.3 | 项目计划修订 | manual | 6d | 2017-10-16 A | 2017-10-23 A | 13 | 100% |  |  |  | 吕莉 | 48h | 48h |  |  |
| 19 | 2.2.4 | 项目logo设计 | manual | 6d | 2017-10-16 A | 2017-10-23 A | 13 | 100% |  |  |  | 吕莉 | 48h | 48h |  |  |
| 20 | 2.2.5 | 项目计划修订稿以及PPT | milestone, manual | 0d | 2017-10-18 A | 2017-10-18 A |  | 100% |  |  |  |  |  |  |  |  |
| 21 | 3 | **可行性研究** |  | 14d | 2017-10-18 A | 2017-11-05 | 15 | 76% | 3.36d |  |  |  | 224h | 152h |  | 吕莉 |
| 22 | 3.1 | **可行性分析报告初稿** |  | 6d | 2017-10-18 A | 2017-10-25 | 13 | 100% |  |  | 2017-10-24 |  | 56h | 56h | 为了按时达成可交付成果将此项目提前到上一个项目之前 |  |
| 23 | 3.1.1 | 提前预习与提前教学可行性分析 | manual | 1d | 2017-10-21 A | 2017-10-21 A |  | 100% |  |  |  | 陈董锴 | 8h | 8h |  |  |
| 24 | 3.1.2 | 操作可行性分析 | manual | 2d | 2017-10-23 A | 2017-10-24 A | 23 | 100% |  |  |  | 陈董锴 | 16h | 16h |  |  |
| 25 | 3.1.3 | 技术可行性分析 | manual | 2d | 2017-10-23 A | 2017-10-24 A | 23 | 100% |  |  |  | 吴安之 | 16h | 16h |  |  |
| 26 | 3.1.4 | 经济可行性分析 | manual | 2d | 2017-10-23 A | 2017-10-24 A | 23 | 100% |  |  |  | 吕莉 | 16h | 16h |  |  |
| 27 | 3.1.5 | 可行性分析报告初稿 | milestone, manual | 0d | 2017-10-18 A | 2017-10-18 A |  | 100% |  |  |  |  |  |  |  |  |

| ID | WBS | Task | Type | Duration | Start | Finish | Predecessors | Complete | Actual finish | Total slack | Resources | Work | Actual work | 负责人 | 项目调整备注 |
| --- | --- | --- | --- | --- | --- | --- | --- | --- | --- | --- | --- | --- | --- | --- | --- |
| 28 | 3.2 | **可行性分析报告修订** |  | 9d | 2017-10-25 A | 2017-11-05 | 22 | 100% | 2017-10-30 |  |  | 96h | 96h |  |  |
| 29 | 3.2.1 | 操作可行性分析报告更改 | manual | 4d | 2017-10-25 A | 2017-10-30 A | 24 | 100% |  |  | 陈董锴 | 32h | 32h |  |  |
| 30 | 3.2.2 | 技术可行性分析报告更改 | manual | 4d | 2017-10-25 A | 2017-10-30 A | 25 | 100% |  |  | 吴安之 | 32h | 32h |  |  |
| 31 | 3.2.3 | 经济可行性分析报告更改 | manual | 4d | 2017-10-25 A | 2017-10-30 A | 26 | 100% |  |  | 吕莉 | 32h | 32h |  |  |
| 32 | 3.2.4 | 可行性分析报告修订稿 | milestone, manual | 0d | 2017-10-25 A | 2017-10-25 A |  | 100% |  |  |  |  |  |  |  |
| 33 | 3.3 | **需求分析前准备任务** |  | 3d | 2017-11-01 | 2017-11-03 | 28 |  |  | 0d |  | 72h |  |  |  |
| 34 | 3.3.1 | 更新项目计划，可行性分析 | manual | 3d | 2017-11-01 | 2017-11-03 | 22 |  |  |  | 吕莉; 吴安之 | 48h |  | 陈董锴 | 在SRS文档生成前再次调整前面的工作 |
| 35 | 3.3.2 | 熟悉Python网页开发框架 | manual | 1d | 2017-11-03 | 2017-11-03 |  |  |  |  | 陈董锴 | 8h |  |  | 由于陈董锴对Python语言接触较多，所以会更快的熟悉此框架开发来分享 |
| 36 | 3.3.3 | 按新的构建再次改进原型 | manual | 2d | 2017-11-01 | 2017-11-02 |  |  |  |  | 吴安之 | 16h |  |  | 原型暂时放置网页端，在下次里程碑之前移植到 |
| 37 | 4 | **需求分析** |  | 11d | 2017-11-07 | 2017-11-21 | 21 |  |  |  |  | 224h |  | 吴安之 |  |
| 38 | 4.1 | 需求说明SRS | manual | 6d | 2017-11-02 | 2017-11-09 | 28 |  |  |  | 吕莉; 吴安之; 陈董锴 | 144h |  |  |  |
| 39 | 4.2 | SRS修订 | manual | 5d | 2017-11-02 | 2017-11-08 | 28 |  |  |  | 吕莉; 吴安之 | 80h |  |  |  |
| 40 | 4.3 | SRS修订文档 | milestone, manual | 0d | 2017-11-07 | 2017-11-07 |  |  |  |  |  |  |  |  |  |
| 41 | 5 | **总体设计** |  | 16d | 2017-11-15 | 2017-12-06 | 37 |  |  |  |  | 216h |  | 吴安之 |  |
| 42 | 5.1 | 总体设计报告 | manual | 6d | 2017-11-15 | 2017-11-22 |  |  |  |  | 吕莉; 吴安之; 陈董锴 | 144h |  |  |  |
| 43 | 5.2 | 总体设计报告修订 | manual | 3d | 2017-12-01 | 2017-12-05 |  |  |  |  | 吕莉; 吴安之; 陈董锴 | 72h |  |  |  |
| 44 | 5.3 | 总体设计报告 | milestone, manual | 0d | 2017-11-15 | 2017-11-15 |  |  |  |  |  |  |  |  |  |
| 45 | 6 | **详细设计** |  | 16d | 2017-11-15 | 2017-12-06 | 41 |  |  |  |  | 288h |  | 陈董锴 |  |
| 46 | 6.1 | **详细设计报告** |  | 6d | 2017-11-23 | 2017-11-30 | 42 |  |  |  | 吕莉; 吴安之; 陈董锴 | 288h |  |  |  |
| 47 | 6.1.1 | 数据库设计 | manual | 6d | 2017-11-23 | 2017-11-30 |  |  |  |  | 陈董锴 | 48h |  |  |  |
| 48 | 6.1.2 | 子系统设计 | manual | 6d | 2017-11-23 | 2017-11-30 |  |  |  |  | 吴安之 | 48h |  |  |  |
| 49 | 6.1.3 | 界面设计 | manual | 6d | 2017-11-23 | 2017-11-30 |  |  |  |  | 吕莉 | 48h |  |  |  |
| 50 | 7 | 详细设计报告修订 | manual | 3d | 2017-12-07 | 2017-12-11 | 45 |  |  |  | 吕莉; 吴安之; 陈董锴 | 72h |  |  |  |
| 51 | 8 | 总体设计报告，详细设计报告以及PPT | milestone, manual | 0d | 2017-09-27 | 2017-09-27 |  |  |  |  |  |  |  |  |  |

| ID | WBS | Task | Type | Duration | Start | Finish | Predecessors | Resources | Work | 负责人 | 项目调整备注 |
| --- | --- | --- | --- | --- | --- | --- | --- | --- | --- | --- | --- |
| 52 | 9 | **编码测试** |  | 16d | 2017-12-06 | 2017-12-27 | 45 |  | 960h | 吕莉 |  |
| 53 | 9.1 | 学习更深层次的前端技术 | manual | 3d | 2017-11-23 | 2017-11-27 |  | 陈董锴; 吕莉 | 48h |  |  |
| 54 | 9.2 | 开始学习Ajax/Boostrap | manual | 5d | 2017-11-29 | 2017-12-05 | 53 | 陈董锴 | 40h |  |  |
| 55 | 9.3 | **可访问浏览获取信息及代码清单测试用例** |  | 7d | 2017-12-06 | 2017-12-14 |  | 陈董锴 | 280h |  |  |
| 56 | 9.3.1 | 完成平台搭建及后台部署 | manual | 5d | 2017-12-06 | 2017-12-12 |  | 吴安之 | 40h |  |  |
| 57 | 9.3.2 | 代码清单以及测试用例 | manual | 7d | 2017-12-06 | 2017-12-14 |  | 陈董锴; 吕莉; 吴安之 | 168h |  |  |
| 58 | 9.3.3 | 能够正常访问及获取相关商品信息 | manual | 2d | 2017-12-13 | 2017-12-14 | 56 | 陈董锴 | 16h |  |  |
| 59 | 9.3.4 | 代码清单+测试用例 | milestone, manual | 0d | 2017-12-06 | 2017-12-06 |  |  |  |  |  |
| 60 | 9.4 | **用户(会员)登录注册** |  | 7d | 2017-12-14 | 2017-12-22 |  |  | 112h |  |  |
| 61 | 9.4.1 | 基本注册 | manual | 2d | 2017-12-14 | 2017-12-15 |  | 陈董锴 | 16h |  |  |
| 62 | 9.4.2 | 基本登录 | manual | 2d | 2017-12-18 | 2017-12-19 | 61 | 陈董锴; 吴安之 | 32h |  |  |
| 63 | 9.4.3 | 登录状态监测 | manual | 1d | 2017-12-20 | 2017-12-20 | 62 | 吕莉 | 8h |  |  |
| 64 | 9.4.4 | 系统测试报告 | manual | 7d | 2017-12-14 | 2017-12-22 |  | 吕莉 | 56h |  |  |
| 65 | 9.4.5 | 系统测试报告 | milestone, manual | 0d | 2017-12-14 | 2017-12-14 |  |  |  |  |  |
| 66 | 9.5 | **客户留言及咨询** |  | 4d | 2017-12-23 | 2017-12-27 |  | 陈董锴; 吕莉; 吴安之 | 96h |  |  |
| 67 | 9.5.1 | 留言操作 | manual | 1d | 2017-12-23 | 2017-12-23 |  |  |  |  |  |
| 68 | 9.5.2 | 与账户子系统连接 | manual | 2d | 2017-12-24 | 2017-12-25 |  |  |  |  |  |
| 69 | 9.5.3 | 测试报告修订 | milestone, manual | 0d | 2017-12-23 | 2017-12-23 |  |  |  |  |  |
| 70 | 9.6 | **测试** |  | 16d | 2017-12-06 | 2017-12-27 |  | 吕莉; 吴安之; 陈董锴 | 384h |  |  |
| 71 | 9.6.1 | 子系统测试 | manual | 1d? | 2017-12-06 | 2017-12-06 |  |  |  |  |  |
| 72 | 9.6.2 | 系统测试 | manual | 3d | 2017-12-07 | 2017-12-11 | 71 |  |  |  |  |
| 73 | 9.6.3 | 验收测试 | manual | 5d | 2017-12-12 | 2017-12-16 | 72 |  |  |  |  |
| 74 | 9.6.4 | 平行测试 | manual | 4d | 2017-12-18 | 2017-12-21 | 73 |  |  |  |  |
| 75 | 10 | **维护** |  | 8d | 2017-12-27 | 2018-01-05 | 52 |  | 96h | 陈董锴 | 维护时间可有延迟，直至改软件完全不再使用 |
| 76 | 10.1 | 功能该进 | manual | 4d | 2017-12-27 | 2018-01-01 |  | 吕莉; 吴安之 | 64h |  |  |
| 77 | 10.2 | 功能修正 | manual | 4d | 2018-01-01 | 2018-01-04 |  | 吕莉 | 32h |  |  |
| 78 | 10.3 | 项目总结报告，总评审PPT | milestone, manual | 0d | 2017-12-27 | 2017-12-27 |  |  |  |  |  |
